# Cronograma JFT

Schedule from MS Project, 2013-10-14 to 2013-12-20, status date 2013-10-14, 3 hours a day, costs in R$, A marks actual dates.

## Calendars

- Standard: Mon-Fri 08:00-12:00, 13:00-17:00; Sat-Sun off.

## Resources

| Resource | Rate | Cost per use |
| --- | --- | --- |
| Cristiano Martins | 35 | 35 |

## Schedule

| ID | WBS | Task | Type | Duration | Start | Finish | Predecessors | Complete | Remaining | Total slack | Free slack | Resources | Work | Actual work | Cost | Actual cost |
| --- | --- | --- | --- | --- | --- | --- | --- | --- | --- | --- | --- | --- | --- | --- | --- | --- |
| 1 | 1 | **JFT** |  | 131d | 2013-10-14 08:00 A | 2013-12-20 09:00 |  | 9% | 119.43d | 0d |  |  | 399h | 36.3h | 16,380 | 1,620.5 |
| 2 | 1.1 | **Planejamento** |  | 94.33d | 2013-10-24 13:00 A | 2013-12-12 16:00 |  | 54% | 42.97d | 14d |  |  | 9h | 4.9h | 385 | 241.5 |
| 3 | 1.1.1 | Planejamento Atividades |  | 5h | 2013-10-24 13:00 A | 2013-10-25 09:00 |  | 50% | 2.5h | 92.13d | 91.33d | Cristiano Martins | 5h | 2.5h | 210 | 122.5 |
| 4 | 1.1.2 | Criação Cronograma |  | 4h | 2013-12-12 11:00 A | 2013-12-12 16:00 | 3 | 60% | 1.6h | 14d |  | Cristiano Martins | 4h | 2.4h | 175 | 119 |
| 5 | 1.2 | **Relatórios** |  | 35.67d | 2013-10-29 09:00 | 2013-11-15 12:00 |  |  |  | 64.67d |  |  | 21h |  | 1,050 |  |
| 6 | 1.2.1 | Estudo Relatórios |  | 5h | 2013-10-29 09:00 | 2013-10-29 15:00 |  |  |  | 64.67d | 0d | Cristiano Martins | 5h |  | 210 |  |
| 7 | 1.2.2 | Relatório Lucros |  | 2h | 2013-11-13 13:00 | 2013-11-13 15:00 | 6 |  |  | 70.33d | 4.67d | Cristiano Martins | 2h |  | 105 |  |
| 8 | 1.2.3 | Relatório Perdas |  | 2h | 2013-11-13 15:00 | 2013-11-13 17:00 | 6 |  |  | 69.67d | 4d | Cristiano Martins | 2h |  | 105 |  |
| 9 | 1.2.4 | Relatório Impostos |  | 2h | 2013-11-14 08:00 | 2013-11-14 10:00 | 6 |  |  | 69d | 3.33d | Cristiano Martins | 2h |  | 105 |  |
| 10 | 1.2.5 | Relatório IR |  | 2h | 2013-11-14 10:00 | 2013-11-14 12:00 | 6 |  |  | 68.33d | 2.67d | Cristiano Martins | 2h |  | 105 |  |
| 11 | 1.2.6 | Relatório Posição |  | 2h | 2013-11-14 13:00 | 2013-11-14 15:00 | 6 |  |  | 67.67d | 2d | Cristiano Martins | 2h |  | 105 |  |
| 12 | 1.2.7 | Relatório Carteira |  | 2h | 2013-11-14 15:00 | 2013-11-14 17:00 | 6 |  |  | 67d | 1.33d | Cristiano Martins | 2h |  | 105 |  |
| 13 | 1.2.8 | Relatório Taxas |  | 2h | 2013-11-15 08:00 | 2013-11-15 10:00 | 6 |  |  | 66.33d | 0.67d | Cristiano Martins | 2h |  | 105 |  |
| 14 | 1.2.9 | Relatório Unificado |  | 2h | 2013-11-15 10:00 | 2013-11-15 12:00 | 6 |  |  | 65.67d | 0d | Cristiano Martins | 2h |  | 105 |  |
| 15 | 1.2.10 | Fim | milestone | 0h | 2013-11-15 12:00 | 2013-11-15 12:00 | 6, 7, 8, 9, 10, 11, 12, 13, 14 |  |  | 65.67d |  |  |  |  |  |  |
| 16 | 1.3 | **Gráficos** |  | 94.33d | 2013-10-14 08:00 A | 2013-12-02 11:00 |  | 3% | 91.78d | 36.67d |  |  | 25h | 1h | 1,155 | 70 |
| 17 | 1.3.1 | Estudo API Graficos |  | 4h | 2013-10-17 08:00 A | 2013-10-17 12:00 |  | 25% | 3h | 30.67d | 0d | Cristiano Martins | 4h | 1h | 175 | 70 |
| 18 | 1.3.2 | Desenvolvimento core Graficos |  | 8h | 2013-10-28 09:00 | 2013-10-29 09:00 | 17 |  |  | 33.33d | 0d | Cristiano Martins | 8h |  | 315 |  |
| 19 | 1.3.3 | **Ferramentas** |  | 94.33d | 2013-10-14 08:00 | 2013-12-02 11:00 |  |  |  | 36.67d |  |  | 4h |  | 210 |  |
| 20 | 1.3.3.1 | Traçar Linhas |  | 2h | 2013-11-29 16:00 | 2013-12-02 09:00 | 24 |  |  | 37.33d | 0.67d | Cristiano Martins | 2h |  | 105 |  |
| 21 | 1.3.3.2 | Traçar Movimentação |  | 2h | 2013-12-02 09:00 | 2013-12-02 11:00 | 24 |  |  | 36.67d | 0d | Cristiano Martins | 2h |  | 105 |  |
| 22 | 1.3.3.3 | Traçar Estudo |  | 6h | 2013-10-14 08:00 | 2013-10-14 15:00 |  |  |  | 129d |  |  |  |  |  |  |
| 23 | 1.3.3.4 | Pintar linha de preço quando em alta ou baixa |  | 6h | 2013-10-14 08:00 | 2013-10-14 15:00 |  |  |  | 129d |  |  |  |  |  |  |
| 24 | 1.3.4 | **Plotagem Graficos** |  | 2d | 2013-10-29 15:00 | 2013-10-30 12:00 |  |  |  | 33.33d | 0d |  | 6h |  | 315 |  |
| 25 | 1.3.4.1 | Candle |  | 2h | 2013-10-29 15:00 | 2013-10-29 17:00 | 18 |  |  | 34.67d |  | Cristiano Martins | 2h |  | 105 |  |
| 26 | 1.3.4.2 | Line |  | 2h | 2013-10-30 08:00 | 2013-10-30 10:00 | 18 |  |  | 34d |  | Cristiano Martins | 2h |  | 105 |  |
| 27 | 1.3.4.3 | Bar |  | 2h | 2013-10-30 10:00 | 2013-10-30 12:00 | 18 |  |  | 33.33d |  | Cristiano Martins | 2h |  | 105 |  |
| 28 | 1.3.5 | Impressão |  | 3h | 2013-11-29 13:00 | 2013-11-29 16:00 | 18 |  |  | 38d | 1.33d | Cristiano Martins | 3h |  | 140 |  |
| 29 | 1.3.6 | Fim | milestone | 0h | 2013-12-02 11:00 | 2013-12-02 11:00 | 17, 18, 20, 21, 25, 26, 27, 28 |  |  | 36.67d |  |  |  |  |  |  |

| ID | WBS | Task | Type | Duration | Start | Finish | Predecessors | Complete | Remaining | Total slack | Free slack | Resources | Work | Actual work | Cost | Actual cost |
| --- | --- | --- | --- | --- | --- | --- | --- | --- | --- | --- | --- | --- | --- | --- | --- | --- |
| 30 | 1.4 | **Trading** |  | 109.33d | 2013-10-18 13:00 A | 2013-12-16 12:00 |  | 16% | 91.54d | 9.67d |  |  | 59h | 9.6h | 2,310 | 371 |
| 31 | 1.4.1 | Desenvolvimento core Trading |  | 24h | 2013-10-18 13:00 A | 2013-10-28 09:00 |  | 40% | 14.4h | 13d | 0d | Cristiano Martins | 24h | 9.6h | 875 | 371 |
| 32 | 1.4.2 | Verificar Ordens |  | 6h | 2013-12-09 11:00 | 2013-12-10 09:00 | 31 |  |  | 21.33d | 11.67d | Cristiano Martins | 6h |  | 245 |  |
| 33 | 1.4.3 | Verificar Posição |  | 6h | 2013-12-10 09:00 | 2013-12-10 16:00 | 31 |  |  | 19.33d | 9.67d | Cristiano Martins | 6h |  | 245 |  |
| 34 | 1.4.4 | Verificar Carteira |  | 6h | 2013-12-10 16:00 | 2013-12-11 14:00 | 31 |  |  | 17.33d | 7.67d | Cristiano Martins | 6h |  | 245 |  |
| 35 | 1.4.5 | Enviar Ordem |  | 5h | 2013-12-13 16:00 | 2013-12-16 12:00 | 31 |  |  | 9.67d | 0d | Cristiano Martins | 5h |  | 210 |  |
| 36 | 1.4.6 | Alterar Ordem |  | 6h | 2013-12-11 14:00 | 2013-12-12 17:00 | 31 |  |  | 13.67d | 4d | Cristiano Martins | 6h |  | 245 |  |
| 37 | 1.4.7 | Cancelar Ordem |  | 6h | 2013-12-13 09:00 | 2013-12-13 16:00 | 31 |  |  | 11.33d | 1.67d | Cristiano Martins | 6h |  | 245 |  |
| 38 | 1.4.8 | Fim | milestone | 0h | 2013-12-16 12:00 | 2013-12-16 12:00 | 31, 32, 33, 34, 35, 36, 37 |  |  | 9.67d |  |  |  |  |  |  |
| 39 | 1.5 | **UI** |  | 111d | 2013-10-23 13:00 A | 2013-12-20 09:00 |  | 11% | 99.16d | 0d |  |  | 45h | 4.8h | 2,520 | 308 |
| 40 | 1.5.1 | Desenvolvimento core UI |  | 8h | 2013-10-23 13:00 A | 2013-10-24 12:00 |  | 30% | 5.6h | 0d |  | Cristiano Martins | 8h | 2.4h | 315 | 119 |
| 41 | 1.5.2 | Programa |  | 1h | 2013-12-19 08:00 | 2013-12-19 09:00 | 40 |  |  | 2.67d |  | Cristiano Martins | 1h |  | 70 |  |
| 42 | 1.5.3 | Tela Opções Chart |  | 1h | 2013-12-19 09:00 | 2013-12-19 10:00 | 40 |  |  | 2.33d |  | Cristiano Martins | 1h |  | 70 |  |
| 43 | 1.5.4 | Tela Configuração |  | 1h | 2013-12-19 10:00 | 2013-12-19 11:00 | 40 |  |  | 2d |  | Cristiano Martins | 1h |  | 70 |  |
| 44 | 1.5.5 | Tela Conexões |  | 1h | 2013-12-19 11:00 | 2013-12-19 12:00 | 40 |  |  | 1.67d |  | Cristiano Martins | 1h |  | 70 |  |
| 45 | 1.5.6 | Tela Importação de Dados |  | 1h | 2013-12-19 13:00 | 2013-12-19 14:00 | 40 |  |  | 1.33d |  | Cristiano Martins | 1h |  | 70 |  |
| 46 | 1.5.7 | **Financeiro** |  | 16d | 2013-12-12 09:00 A | 2013-12-20 09:00 |  | 16% | 13.44d | 0d |  |  | 5h | 0.8h | 350 | 63 |
| 47 | 1.5.7.1 | Tela Depositos |  | 1h | 2013-12-19 14:00 | 2013-12-19 15:00 | 40 |  |  | 1d |  | Cristiano Martins | 1h |  | 70 |  |
| 48 | 1.5.7.2 | Tela Regras de Distribuição |  | 1h | 2013-12-19 15:00 | 2013-12-19 16:00 | 40 |  |  | 0.67d |  | Cristiano Martins | 1h |  | 70 |  |
| 49 | 1.5.7.3 | Tela Journal Entry |  | 1h | 2013-12-12 09:00 A | 2013-12-12 10:00 | 40 | 80% | 0.2h | 15.67d |  | Cristiano Martins | 1h | 0.8h | 70 | 63 |
| 50 | 1.5.7.4 | Tela Impostos |  | 1h | 2013-12-19 16:00 | 2013-12-19 17:00 | 40 |  |  | 0.33d |  | Cristiano Martins | 1h |  | 70 |  |
| 51 | 1.5.7.5 | Tela Config. De Impostos |  | 1h | 2013-12-20 08:00 | 2013-12-20 09:00 | 40 |  |  | 0d |  | Cristiano Martins | 1h |  | 70 |  |
| 52 | 1.5.8 | **Master Data** |  | 13.67d | 2013-12-13 08:00 A | 2013-12-20 09:00 |  | 23% | 10.54d | 0d |  |  | 7h | 1.6h | 490 | 126 |
| 53 | 1.5.8.1 | Tela Paises |  | 1h | 2013-12-20 08:00 | 2013-12-20 09:00 | 40 |  |  | 0d |  | Cristiano Martins | 1h |  | 70 |  |
| 54 | 1.5.8.2 | Tela Empresas |  | 1h | 2013-12-20 08:00 | 2013-12-20 09:00 | 40 |  |  | 0d |  | Cristiano Martins | 1h |  | 70 |  |
| 55 | 1.5.8.3 | Tela Bolsas |  | 1h | 2013-12-20 08:00 | 2013-12-20 09:00 | 40 |  |  | 0d |  | Cristiano Martins | 1h |  | 70 |  |
| 56 | 1.5.8.4 | Tela Corretoras |  | 1h | 2013-12-20 08:00 | 2013-12-20 09:00 | 40 |  |  | 0d |  | Cristiano Martins | 1h |  | 70 |  |
| 57 | 1.5.8.5 | Tela Setores |  | 1h | 2013-12-20 08:00 | 2013-12-20 09:00 | 40 |  |  | 0d |  | Cristiano Martins | 1h |  | 70 |  |
| 58 | 1.5.8.6 | Tela Moedas |  | 1h | 2013-12-13 08:00 A | 2013-12-13 09:00 | 40 | 80% | 0.2h | 13.33d |  | Cristiano Martins | 1h | 0.8h | 70 | 63 |
| 59 | 1.5.8.7 | Tela Cotações Moedas |  | 1h | 2013-12-13 08:00 A | 2013-12-20 08:12 | 40 | 80% | 0.2h | 0.27d |  | Cristiano Martins | 1h | 0.8h | 70 | 63 |

| ID | WBS | Task | Duration | Start | Finish | Predecessors | Total slack | Free slack | Resources | Work | Cost |
| --- | --- | --- | --- | --- | --- | --- | --- | --- | --- | --- | --- |
| 60 | 1.5.9 | **Trading** | 1.33d | 2013-12-17 08:00 | 2013-12-17 12:00 |  | 7d |  |  | 4h | 210 |
| 61 | 1.5.9.1 | Tela Ger. De Ordens | 2h | 2013-12-17 08:00 | 2013-12-17 10:00 | 40 | 7.67d |  | Cristiano Martins | 2h | 105 |
| 62 | 1.5.9.2 | Tela Posição e Resultados | 2h | 2013-12-17 10:00 | 2013-12-17 12:00 | 40 | 7d |  | Cristiano Martins | 2h | 105 |
| 63 | 1.5.10 | **Reports** | 0.67d | 2013-12-17 13:00 | 2013-12-17 15:00 |  | 6.33d |  |  | 2h | 105 |
| 64 | 1.5.10.1 | Tela Relatórios | 2h | 2013-12-17 13:00 | 2013-12-17 15:00 | 40 | 6.33d |  | Cristiano Martins | 2h | 105 |
| 65 | 1.5.11 | **Simulação** | 1.33d | 2013-12-17 15:00 | 2013-12-18 10:00 |  | 5d |  |  | 4h | 210 |
| 66 | 1.5.11.1 | Tela Backtest | 2h | 2013-12-17 15:00 | 2013-12-17 17:00 | 40 | 5.67d |  | Cristiano Martins | 2h | 105 |
| 67 | 1.5.11.2 | Tela Estratégias | 2h | 2013-12-18 08:00 | 2013-12-18 10:00 | 40 | 5d |  | Cristiano Martins | 2h | 105 |
| 68 | 1.5.12 | **Análise** | 5.33d | 2013-12-16 13:00 | 2013-12-18 12:00 |  | 4.33d |  |  | 6h | 280 |
| 69 | 1.5.12.1 | Tela Gráfico | 4h | 2013-12-16 13:00 | 2013-12-16 17:00 | 40 | 8.33d |  | Cristiano Martins | 4h | 175 |
| 70 | 1.5.12.2 | Tela Estudo | 2h | 2013-12-18 10:00 | 2013-12-18 12:00 | 40 | 4.33d |  | Cristiano Martins | 2h | 105 |
| 71 | 1.5.13 | **Estratégia** | 1.33d | 2013-12-18 13:00 | 2013-12-18 17:00 |  | 3d |  |  | 4h | 210 |
| 72 | 1.5.13.1 | Tela Estratégias | 2h | 2013-12-18 13:00 | 2013-12-18 15:00 | 40 | 3.67d |  | Cristiano Martins | 2h | 105 |
| 73 | 1.5.13.2 | Tela Construtor de Estratégias | 2h | 2013-12-18 15:00 | 2013-12-18 17:00 | 40 | 3d |  | Cristiano Martins | 2h | 105 |
| 74 | 1.6 | **Simulação/Backtesting** | 10.67d | 2013-10-30 13:00 | 2013-11-05 12:00 |  | 87d |  |  | 32h | 1,155 |
| 75 | 1.6.1 | Desenvolvimento core Simulação | 32h | 2013-10-30 13:00 | 2013-11-05 12:00 |  | 87d |  | Cristiano Martins | 32h | 1,155 |
| 76 | 1.7 | **Análise** | 5.33d | 2013-11-05 13:00 | 2013-11-07 12:00 |  | 81.67d |  |  | 16h | 595 |
| 77 | 1.7.1 | Desenvolvimento core Analise | 16h | 2013-11-05 13:00 | 2013-11-07 12:00 |  | 81.67d |  | Cristiano Martins | 16h | 595 |
| 78 | 1.8 | **Dados** | 92d | 2013-10-14 08:00 | 2013-11-29 12:00 |  | 39d |  |  | 104h | 3,850 |
| 79 | 1.8.1 | Desenvolvimento Interface de Dados | 16h | 2013-10-14 08:00 | 2013-10-15 17:00 |  | 40d | 0d | Cristiano Martins | 16h | 595 |
| 80 | 1.8.2 | Desenvolvimento Layout Arquivos de Importação | 8h | 2013-10-16 08:00 | 2013-10-16 17:00 | 79 | 40d | 0d | Cristiano Martins | 8h | 315 |
| 81 | 1.8.3 | Importação Dados Historicos | 24h | 2013-11-21 13:00 | 2013-11-26 12:00 | 80 | 47d |  | Cristiano Martins | 24h | 875 |
| 82 | 1.8.4 | Importação TickData | 24h | 2013-11-26 13:00 | 2013-11-29 12:00 | 80 | 39d |  | Cristiano Martins | 24h | 875 |
| 83 | 1.8.5 | Conexão DDE | 16h | 2013-11-15 13:00 | 2013-11-19 12:00 | 79 | 60.33d |  | Cristiano Martins | 16h | 595 |
| 84 | 1.8.6 | Comunicação protocolo FIX | 16h | 2013-11-19 13:00 | 2013-11-21 12:00 | 79 | 55d |  | Cristiano Martins | 16h | 595 |

| ID | WBS | Task | Duration | Start | Finish | Predecessors | Complete | Remaining | Total slack | Free slack | Resources | Work | Actual work | Cost | Actual cost |
| --- | --- | --- | --- | --- | --- | --- | --- | --- | --- | --- | --- | --- | --- | --- | --- |
| 85 | 1.9 | **Contabilidade** | 98.33d | 2013-10-17 13:00 A | 2013-12-09 11:00 |  | 14% | 84.29d | 23.33d |  |  | 56h | 8h | 2,170 | 315 |
| 86 | 1.9.1 | Desenvolvimento core Contabilidade | 16h | 2013-10-17 13:00 A | 2013-10-22 14:36 |  | 50% | 8h | 23.47d | 0d | Cristiano Martins | 16h | 8h | 595 | 315 |
| 87 | 1.9.2 | Calcular IR | 8h | 2013-12-02 11:00 | 2013-12-03 11:00 | 86 |  |  | 34d |  | Cristiano Martins | 8h |  | 315 |  |
| 88 | 1.9.3 | Registrar Taxas | 8h | 2013-12-03 11:00 | 2013-12-04 11:00 | 86 |  |  | 31.33d |  | Cristiano Martins | 8h |  | 315 |  |
| 89 | 1.9.4 | Registrar Lucros | 8h | 2013-12-04 11:00 | 2013-12-05 11:00 | 86 |  |  | 28.67d |  | Cristiano Martins | 8h |  | 315 |  |
| 90 | 1.9.5 | Registrar Perdas | 8h | 2013-12-05 11:00 | 2013-12-06 11:00 | 86 |  |  | 26d |  | Cristiano Martins | 8h |  | 315 |  |
| 91 | 1.9.6 | Registrar Impostos | 8h | 2013-12-06 11:00 | 2013-12-09 11:00 | 86 |  |  | 23.33d |  | Cristiano Martins | 8h |  | 315 |  |
| 92 | 1.10 | **Cadastro** | 5.33d | 2013-11-07 13:00 | 2013-11-11 12:00 |  |  |  | 76.33d |  |  | 16h |  | 595 |  |
| 93 | 1.10.1 | Desenvolvimento Cadastros | 16h | 2013-11-07 13:00 | 2013-11-11 12:00 |  |  |  | 76.33d |  | Cristiano Martins | 16h |  | 595 |  |
| 94 | 1.11 | **Arquitetura** | 5.33d | 2013-11-11 13:00 A | 2013-11-13 12:00 |  | 50% | 2.67d | 71d |  |  | 16h | 8h | 595 | 315 |
| 95 | 1.11.1 | Modelagem Sistema | 16h | 2013-11-11 13:00 A | 2013-11-13 12:00 |  | 50% | 8h | 71d |  | Cristiano Martins | 16h | 8h | 595 | 315 |
